How a schedule from MS Project changed from version to version. A marks actual dates.

## Version 1 (saved 2021-09-09)

| ID | WBS | Task | Duration | Start | Finish | Predecessors | Total float |
| --- | --- | --- | --- | --- | --- | --- | --- |
| 1 | 1 | **Requirement** | 3d | 2021-08-16 | 2021-08-19 |  |  |
| 2 |  | สรุป Requirement ที่ต้องทำจาก CEPP 2563 | 3d | 2021-08-16 | 2021-08-19 |  | 85.88d |
| 3 | 2 | **การออกแบบ** | 42d | 2021-08-19 | 2021-10-15 | 1 |  |
| 4 | 2.1 | **Diagram** | 17d | 2021-08-19 | 2021-09-13 |  | 85.88d |
| 5 |  | Use Case | 1d | 2021-08-19 | 2021-08-20 | 2 | 85.88d |
| 6 |  | Data Model | 7d | 2021-08-20 | 2021-08-31 | 5 | 85.88d |
| 7 |  | Sequence | 3d | 2021-08-31 | 2021-09-03 | 6 | 85.88d |
| 8 |  | Deployment | 1d | 2021-09-03 | 2021-09-06 | 7 | 85.88d |
| 9 |  | Microservice Deployment | 5d | 2021-09-06 | 2021-09-13 | 8 | 85.88d |
| 10 | 2.2 | **API Modules Design** | 24d | 2021-09-13 | 2021-10-15 |  | 85.88d |
| 11 | 2.2.1 | **ผู้เล่น** | 13d | 2021-09-13 | 2021-09-30 |  | 85.88d |
| 12 |  | การสมัครสมาชิก | 1d | 2021-09-13 | 2021-09-14 | 9 | 85.88d |
| 13 |  | การเพิ่มระดับสมาชิก | 1d | 2021-09-14 | 2021-09-15 | 12 | 85.88d |
| 14 |  | การเข้าสู่ระบบ | 1d | 2021-09-15 | 2021-09-16 | 13 | 85.88d |
| 15 |  | การแก้ไขรายละเอียดสมาชิก | 1d | 2021-09-16 | 2021-09-17 | 14 | 85.88d |
| 16 |  | การตั้งค่ารูปแบบหน้าจอ | 1d | 2021-09-17 | 2021-09-20 | 15 | 85.88d |
| 17 |  | การรับข้อมูลจากบอร์ดประกาศ | 2d | 2021-09-20 | 2021-09-22 | 16 | 85.88d |
| 18 |  | การเติมเงินและการจ่ายเงิน | 2d | 2021-09-22 | 2021-09-24 | 17 | 85.88d |
| 19 |  | การเข้าร่วมการแข่งขัน | 1d | 2021-09-24 | 2021-09-27 | 18 | 85.88d |
| 20 |  | การเรียกผู้จัดการการแข่งขัน | 1d | 2021-09-27 | 2021-09-28 | 19 | 85.88d |
| 21 |  | การดูผลการแข่งขันในปัจจุบัน | 1d | 2021-09-28 | 2021-09-29 | 20 | 85.88d |
| 22 |  | การดูผลการแข่งขันย้อนหลัง | 1d | 2021-09-29 | 2021-09-30 | 21 | 85.88d |
| 23 | 2.2.2 | **ผู้จัดการการแข่งขัน** | 6d | 2021-09-30 | 2021-10-08 |  | 85.88d |
| 24 |  | การเข้าสู่ระบบ | 1d | 2021-09-30 | 2021-10-01 | 22 | 85.88d |
| 25 |  | การดูข้อมูลการแข่งขันในปัจจุบัน | 1d | 2021-10-01 | 2021-10-04 | 24 | 85.88d |
| 26 |  | การสร้างรายการแข่งขัน | 1d | 2021-10-04 | 2021-10-05 | 25 | 85.88d |
| 27 |  | การแก้ไขรายละเอียดรายการแข่งขัน | 1d | 2021-10-05 | 2021-10-06 | 26 | 85.88d |
| 28 |  | การยกเลิกรายการแข่งขัน | 1d | 2021-10-06 | 2021-10-07 | 27 | 85.88d |
| 29 |  | การพิมพ์ผลลัพธ์การแข่ง | 1d | 2021-10-07 | 2021-10-08 | 28 | 85.88d |
| 30 | 2.2.3 | **ผู้ดูแลระบบ** | 5d | 2021-10-08 | 2021-10-15 |  | 85.88d |
| 31 |  | การเข้าสู่ระบบ | 1d | 2021-10-08 | 2021-10-11 | 29 | 85.88d |
| 32 |  | การลงบอร์ดประกาศ | 1d | 2021-10-11 | 2021-10-12 | 31 | 85.88d |
| 33 |  | การจัดการสมาชิก | 1d | 2021-10-12 | 2021-10-13 | 32 | 85.88d |
| 34 |  | การจัดการเรื่องเงิน | 1d | 2021-10-13 | 2021-10-14 | 33 | 85.88d |
| 35 |  | การสำรองข้อมูล | 1d | 2021-10-14 | 2021-10-15 | 34 | 85.88d |
| 36 | 2.3 | **ออกแบบหน้า UI** | 22d | 2021-09-13 | 2021-10-13 |  | 87.88d |
| 37 | 2.3.1 | **ผู้เล่น** | 22d | 2021-09-13 | 2021-10-13 |  | 87.88d |
| 38 |  | หน้าเข้าสู่ระบบ | 2d | 2021-09-13 | 2021-09-15 | 9 | 87.88d |
| 39 |  | หน้าสมัครสมาชิก | 2d | 2021-09-15 | 2021-09-17 | 38 | 87.88d |
| 40 |  | หน้ารายละเอียดสมาชิก | 2d | 2021-09-17 | 2021-09-21 | 39 | 87.88d |
| 41 |  | หน้าการตั้งค่ารูปแบบหน้าจอ | 2d | 2021-09-21 | 2021-09-23 | 40 | 87.88d |
| 42 |  | หน้าการเติมเงิน | 2d | 2021-09-23 | 2021-09-27 | 41 | 87.88d |
| 43 |  | หน้า Home | 2d | 2021-09-27 | 2021-09-29 | 42 | 87.88d |
| 44 |  | หน้าการแข่งขัน | 2d | 2021-09-29 | 2021-10-01 | 43 | 87.88d |
| 45 |  | หน้าเรียกกรรมการ | 2d | 2021-10-01 | 2021-10-05 | 44 | 87.88d |
| 46 |  | หน้าการแสดงคะแนน | 2d | 2021-10-05 | 2021-10-07 | 45 | 87.88d |
| 47 |  | หน้าผลการแข่งขันปัจจุบัน | 2d | 2021-10-07 | 2021-10-11 | 46 | 87.88d |
| 48 |  | หน้าผลการแข่งขันย้อนหลัง | 2d | 2021-10-11 | 2021-10-13 | 47 | 87.88d |
| 49 | 2.3.2 | **ผู้จัดการการแข่งขัน** | 12d | 2021-09-13 | 2021-09-29 |  | 97.88d |
| 50 |  | หน้าเข้าสู่ระบบ | 2d | 2021-09-13 | 2021-09-15 | 9 | 97.88d |
| 51 |  | หน้าดูข้อมูลการแข่งขันในปัจจุบัน | 2d | 2021-09-15 | 2021-09-17 | 50 | 97.88d |
| 52 |  | หน้าสร้างรายการแข่งขัน | 2d | 2021-09-17 | 2021-09-21 | 51 | 97.88d |
| 53 |  | หน้าแก้ไขรายละเอียดรายการแข่งขัน | 2d | 2021-09-21 | 2021-09-23 | 52 | 97.88d |
| 54 |  | หน้ายกเลิกรายการแข่งขัน | 2d | 2021-09-23 | 2021-09-27 | 53 | 97.88d |
| 55 |  | หน้าพิมพ์ผลลัพธ์การแข่ง | 2d | 2021-09-27 | 2021-09-29 | 54 | 97.88d |
| 56 | 2.3.3 | **ผู้ดูแลระบบ** | 8d | 2021-09-13 | 2021-09-23 |  | 101.88d |
| 57 |  | หน้าเข้าสู่ระบบ | 1d | 2021-09-13 | 2021-09-14 | 9 | 101.88d |
| 58 |  | หน้าลงบอร์ดประกาศ | 1d | 2021-09-14 | 2021-09-15 | 57 | 101.88d |
| 59 |  | หน้าจัดการสมาชิก | 2d | 2021-09-15 | 2021-09-17 | 58 | 101.88d |
| 60 |  | หน้าจัดการเรื่องเงิน | 2d | 2021-09-17 | 2021-09-21 | 59 | 101.88d |
| 61 |  | หน้าสำรองข้อมูล | 2d | 2021-09-21 | 2021-09-23 | 60 | 101.88d |
| 62 | 3 | **การนำมาใช้** | 75.12d? | 2021-10-18 | 2022-01-28 | 3 |  |
| 63 | 3.1 | **ทำระบบล็อคอิน** | 1d? | 2021-10-18 | 2021-10-18 |  | 85d |
| 64 |  | Frontend Dev | 1d? | 2021-10-18 | 2021-10-18 |  | 85d |
| 65 | 3.1.2 | **Backend API** | 1d? | 2021-10-18 | 2021-10-18 |  | 85d |
| 66 |  | Authentication & Authorization | 1d? | 2021-10-18 | 2021-10-18 |  | 85d |
| 67 | 3.2 | **ทำระบบสมัครสมาชิก** | 1d? | 2021-10-19 | 2021-10-19 | 63 | 85d |
| 68 |  | Frontend Dev | 1d? | 2021-10-19 | 2021-10-19 |  | 85d |
| 69 | 3.2.2 | **Backend API** | 1d? | 2021-10-19 | 2021-10-19 |  | 85d |
| 70 |  | Register user | 1d? | 2021-10-19 | 2021-10-19 |  | 85d |

| ID | WBS | Task | Duration | Start | Finish | Predecessors | Total float |
| --- | --- | --- | --- | --- | --- | --- | --- |
| 71 |  | Update user | 1d? | 2021-10-19 | 2021-10-19 |  | 85d |
| 72 | 3.3 | **ทำระบบของรูปแบบการแข่งขัน** | 1d? | 2021-10-20 | 2021-10-20 | 67 | 85d |
| 73 |  | Frontend Dev | 1d? | 2021-10-20 | 2021-10-20 |  | 85d |
| 74 | 3.3.2 | **Backend API** | 1d? | 2021-10-20 | 2021-10-20 |  | 85d |
| 75 |  | Create tournament | 1d? | 2021-10-20 | 2021-10-20 |  | 85d |
| 76 |  | Update tournament | 1d? | 2021-10-20 | 2021-10-20 |  | 85d |
| 77 |  | Delete tournament | 1d? | 2021-10-20 | 2021-10-20 |  | 85d |
| 78 |  | Join tournament | 1d? | 2021-10-20 | 2021-10-20 |  | 85d |
| 79 |  | Exit tournament | 1d? | 2021-10-20 | 2021-10-20 |  | 85d |
| 80 |  | Create team | 1d? | 2021-10-20 | 2021-10-20 |  | 85d |
| 81 |  | Join team | 1d? | 2021-10-20 | 2021-10-20 |  | 85d |
| 82 |  | Exit team | 1d? | 2021-10-20 | 2021-10-20 |  | 85d |
| 83 |  | Manage competitive | 1d? | 2021-10-20 | 2021-10-20 |  | 85d |
| 84 | 3.4 | **ทำระบบการแข่งขัน** | 1d? | 2021-10-21 | 2021-10-21 | 72 | 85d |
| 85 |  | Frontend Dev | 1d? | 2021-10-21 | 2021-10-21 |  | 85d |
| 86 | 3.4.2 | **Backend API** | 1d? | 2021-10-21 | 2021-10-21 |  | 85d |
| 87 |  | Bidding | 1d? | 2021-10-21 | 2021-10-21 |  | 85d |
| 88 |  | Deal card | 1d? | 2021-10-21 | 2021-10-21 |  | 85d |
| 89 |  | Play card | 1d? | 2021-10-21 | 2021-10-21 |  | 85d |
| 90 |  | Calculate score | 1d? | 2021-10-21 | 2021-10-21 |  | 85d |
| 91 |  | Ranking score | 1d? | 2021-10-21 | 2021-10-21 |  | 85d |
| 92 |  | Swap table | 1d? | 2021-10-21 | 2021-10-21 |  | 85d |
| 93 |  | Swap card | 1d? | 2021-10-21 | 2021-10-21 |  | 85d |
| 94 | 3.5 | **ทำระบบการบันทึกคะแนน** | 1d? | 2021-10-22 | 2021-10-22 | 84 | 85d |
| 95 |  | Frontend Dev | 1d? | 2021-10-22 | 2021-10-22 |  | 85d |
| 96 | 3.5.2 | **Backend API** | 1d? | 2021-10-22 | 2021-10-22 |  | 85d |
| 97 |  | Save score of tournament | 1d? | 2021-10-22 | 2021-10-22 |  | 85d |
| 98 |  | Save Ranking of tournament | 1d? | 2021-10-22 | 2021-10-22 |  | 85d |
| 99 |  | Save card in tournament | 1d? | 2021-10-22 | 2021-10-22 |  | 85d |
| 100 | 3.6 | **ทำระบบการค้นหาข้อมูลการแข่งขัน** | 1d? | 2021-10-25 | 2021-10-25 | 94 | 85d |
| 101 |  | Frontend Dev | 1d? | 2021-10-25 | 2021-10-25 |  | 85d |
| 102 |  | Backend API | 1d? | 2021-10-25 | 2021-10-25 |  | 85d |
| 103 | 3.7 | **ทำระบบการชำระเงิน** | 1d? | 2021-10-26 | 2021-10-26 | 100 | 85d |
| 104 |  | Frontend Dev | 1d? | 2021-10-26 | 2021-10-26 |  | 85d |
| 105 |  | Backend API | 1d? | 2021-10-26 | 2021-10-26 |  | 85d |
| 106 | 3.8 | **ทำระบบการสำรองข้อมูล** | 1d? | 2021-10-27 | 2021-10-27 | 103 | 85d |
| 107 |  | Frontend Dev | 1d? | 2021-10-27 | 2021-10-27 |  | 85d |
| 108 |  | Backend API | 1d? | 2021-10-27 | 2021-10-27 |  | 85d |
| 109 | 4 | **การ Deploy** | 5.12d | 2022-01-31 | 2022-02-04 | 62 |  |
| 110 |  | Deploy หน้าเว็บ | 2d | 2022-01-31 | 2022-02-01 |  | 18d |
| 111 |  | Deploy api | 2d | 2022-01-31 | 2022-02-01 |  | 18d |
| 112 | 5 | **การทดสอบ** | 30.12d | 2022-02-07 | 2022-03-18 | 109 |  |
| 113 |  | การทำ Unit test | 15d | 2022-02-07 | 2022-02-25 |  | 15d |
| 114 |  | การทดสอบ Performance | 5d | 2022-02-07 | 2022-02-11 |  | 25d |
| 115 | 6 | **การประเมินผล** | 7d | 2022-03-21 | 2022-03-29 | 112 |  |
| 116 |  | การดูผลตอบรับจากผู้ใช้งานจริง | 7d | 2022-03-21 | 2022-03-29 |  | 0d |

## Version 2 (saved 2021-11-26)

Note of the change: MPP update 26/11/2021

Last finish 2022-03-29 → 2022-03-31 (+2d). Complete tasks 0 → 77.

Added:

| ID | Task | Duration | Start | Finish | Predecessors | Resources |
| --- | --- | --- | --- | --- | --- | --- |
| 3 | Finish Requirement Phase | 0d | 2021-08-19 09:00 A | 2021-08-19 09:00 A | 2 |  |
| 11 | Finish Diagram Phase | 0d | 2021-09-14 12:00 A | 2021-09-14 12:00 A | 10 |  |
| 64 | Finish Design Phase | 0d | 2021-10-15 12:00 A | 2021-10-15 12:00 A | 37 |  |
| 68 | Login Form Component | 0.25d | 2021-10-18 08:00 A | 2021-10-18 10:00 A | 63 | Tae |
| 69 | Validate Login Form | 0.12d | 2021-10-18 10:00 A | 2021-10-18 11:00 A | 68 | Tae |
| 70 | Binding Api | 0.25d | 2021-10-18 11:00 | 2021-10-18 14:00 | 69 | Tae |
| 71 | Route Page | 0.12d | 2021-10-18 14:00 A | 2021-10-18 15:00 A | 70 | Tae |
| 76 | Register Form Component | 0.25d | 2021-10-20 08:00 A | 2021-10-20 10:00 A | 71 | Ice |
| 77 | Validate Reigster Form | 0.25d | 2021-10-20 10:00 A | 2021-10-20 12:00 A | 76 | Ice |
| 78 | Binding Api | 0.38d | 2021-10-20 13:00 A | 2021-10-20 16:00 A | 77 | Ice |
| 79 | Route page | 0.12d | 2021-10-20 16:00 A | 2021-10-20 17:00 A | 78 | Ice |
| 85 | Create Add New Tournament Window | 0.25d | 2021-10-22 08:00 A | 2021-10-22 10:00 A | 79 | Ice |
| 86 | Validate Tournament Information Form | 0.25d | 2021-10-22 10:00 A | 2021-10-22 12:00 A | 85 | Ice |
| 87 | Player List Table Component | 1d | 2021-10-22 13:00 A | 2021-10-25 12:00 A | 86 | Tae |
| 88 | Route to Room Page | 0.25d | 2021-10-25 13:00 A | 2021-10-25 15:00 A | 87 | Ice |
| 89 | Currently Online Friends list component | 2d | 2021-10-25 15:00 A | 2021-10-27 15:00 A | 88 | Ice |
| 90 | Tournament's Chatbox | 3d | 2021-10-27 15:00 A | 2021-11-01 15:00 A | 89 | Tae |
| 91 | Ready Button and Ready Status for all player | 1d | 2021-11-01 15:00 A | 2021-11-02 15:00 | 90 | Tae |
| 92 | Room's menu to edit, delete | 1d | 2021-11-02 15:00 A | 2021-11-03 15:00 | 91 | Ice |
| 93 | Edit Tournament Information Form | 0.5d | 2021-11-03 15:00 A | 2021-11-04 10:00 | 92 | Tae |
| 94 | Validate Edit Tournament Information Form | 0.5d | 2021-11-04 10:00 A | 2021-11-04 15:00 | 93 | Tae |
| 95 | Confirm Delete Windows | 0.5d | 2021-11-04 15:00 A | 2021-11-05 10:00 | 94 | Ice |
| 96 | Binding Api | 3d | 2021-11-05 10:00 A | 2021-11-10 10:00 | 95 | Tae |
| 97 | Handle Warning message | 0.25d | 2021-11-10 10:00 A | 2021-11-10 12:00 | 96 | Tae |
| 108 | Finish semester 1 | 0d | 2021-11-04 17:00 | 2021-11-04 17:00 | 107 |  |
| 109 | Prepare to presentation PROJECT1 | 0d | 2021-12-01 09:00 | 2021-12-01 09:00 |  |  |
| 112 | Bidding Table | 2d | 2021-11-10 13:00 | 2021-11-12 12:00 | 97 | Ice |
| 113 | Card Selection Button | 0.25d | 2021-11-12 13:00 | 2021-11-12 15:00 | 112 | Ice |
| 114 | Bidding Level Button | 0.25d | 2021-11-12 15:00 | 2021-11-12 17:00 | 113 | Ice |
| 115 | Binding Api and Display Bidding In realtime | 2d | 2021-12-06 08:00 | 2021-12-07 17:00 | 114 | Ice |
| 116 | Create Room According to Bidding Information | 1d | 2021-12-08 08:00 | 2021-12-08 17:00 | 115 | Ice |
| 117 | Card list for each player | 1d | 2021-12-09 08:00 | 2021-12-09 17:00 | 116 | Tae |
| 118 | Direction Indicator | 0.12d | 2021-12-10 08:00 | 2021-12-10 09:00 | 117 | Tae |
| 119 | Score Board | 0.12d | 2021-12-10 09:00 | 2021-12-10 10:00 | 118 | Tae |
| 120 | Call Referee Button | 0.12d | 2021-12-10 10:00 | 2021-12-10 11:00 | 119 | Tae |
| 121 | Chatbox with Referee | 1d | 2021-12-10 11:00 | 2021-12-13 11:00 | 120 | Tae |
| 122 | Card Animation | 1.5d | 2021-12-13 11:00 | 2021-12-14 16:00 | 121 | Ice |
| 123 | Binding Api to display Card play in realtime for every session | 17.5d | 2021-12-14 16:00 | 2022-01-18 16:53 | 122 | Ice; Tae |
| 124 | Route to Score Page | 0.12d | 2022-01-19 08:00 | 2022-01-19 09:00 | 123 | Tae |
| 125 | Route to Another Board | 0.5d | 2022-01-24 08:00 | 2022-01-24 12:00 | 124 | Tae |
| 136 | Binding Api | 0.25d | 2022-01-24 13:00 | 2022-01-24 15:00 | 125 | Ice |
| 137 | Summary Table | 0.25d | 2022-01-24 15:00 | 2022-01-24 17:00 | 136 | Ice |
| 144 | search bar component | 0.12d | 2022-01-25 08:00 | 2022-01-25 09:00 | 137 | Tae |
| 145 | List table view | 0.25d | 2022-01-25 09:00 | 2022-01-25 11:00 | 144 | Tae |
| 146 | Filter by category | 0.5d | 2022-01-25 11:00 | 2022-01-25 16:00 | 145 | Tae |
| 147 | Route to match information | 0.12d | 2022-01-26 11:00 | 2022-01-26 12:00 | 146 | Tae |
| 149 | Get information | 1d | 2022-02-02 13:00 | 2022-02-03 12:00 | 141 | Mark |
| 150 | Get score | 1d | 2022-02-03 13:00 | 2022-02-04 12:00 | 149 | Mark |
| 153 | Realplay page | 0.25d | 2022-02-04 13:00 | 2022-02-04 15:00 | 147 | Ice |
| 154 | Score Input page | 0.5d | 2022-02-04 15:00 | 2022-02-07 10:00 | 153 | Tae |
| 155 | Result Score page | 0.12d | 2022-02-07 10:00 | 2022-02-07 11:00 | 154 | Ice |
| 156 | Validate Real play page | 0.12d | 2022-02-07 11:00 | 2022-02-07 12:00 | 155 | Ice |
| 157 | Binding api | 0.5d | 2022-02-07 13:00 | 2022-02-07 17:00 | 156 | Ice |
| 159 | Send Score | 1d | 2022-02-04 13:00 | 2022-02-07 12:00 | 150 | Mark |
| 160 | Get score | 1d | 2022-02-07 13:00 | 2022-02-08 12:00 | 159 | Mark |
| 162 | **Backend API** | 2d | 2022-02-08 13:00 | 2022-02-10 12:00 |  |  |
| 163 | Save data | 1d | 2022-02-08 13:00 | 2022-02-09 12:00 | 160 | Mark |
| 165 | **ระบบโปรไฟล์ผู้ใช้** | 6.25d | 2022-02-10 13:00 | 2022-02-18 15:00 | 161 |  |
| 166 | **Frontend Dev** | 6.25d | 2022-02-10 13:00 | 2022-02-18 15:00 |  |  |
| 167 | User Profile Information Page | 0.5d | 2022-02-10 13:00 | 2022-02-10 17:00 | 157 | Ice |
| 168 | User Information Editor Page | 0.5d | 2022-02-11 08:00 | 2022-02-11 12:00 | 167 | Ice |
| 169 | Validate Edit User Profile Form | 0.25d | 2022-02-11 13:00 | 2022-02-11 15:00 | 168 | Ice |
| 170 | Edit Display Component Menu | 0.5d | 2022-02-11 15:00 | 2022-02-14 10:00 | 169 | Tae |
| 171 | Update Display Component According to HUD menu settings | 2d | 2022-02-14 10:00 | 2022-02-16 10:00 | 170 | Tae |
| 172 | Recent match History table | 0.5d | 2022-02-16 10:00 | 2022-02-16 15:00 | 171 | Ice |
| 173 | Binding Api | 2d | 2022-02-16 15:00 | 2022-02-18 15:00 | 172 | Tae |
| 174 | **Backend API** | 3d | 2022-02-10 13:00 | 2022-02-15 12:00 |  |  |
| 175 | Get Profile Information | 0.5d | 2022-02-10 13:00 | 2022-02-10 17:00 | 164 | Mark |
| 176 | Change Profile Information | 1d | 2022-02-11 08:00 | 2022-02-11 17:00 | 175 | Mark |
| 177 | Change Profile Setting | 1d | 2022-02-14 08:00 | 2022-02-14 17:00 | 176 | Mark |
| 178 | Get User Data | 0.5d | 2022-02-15 08:00 | 2022-02-15 12:00 | 177 | Mark |
| 179 | **ทำระบบบอร์ด** | 4.25d | 2022-02-18 15:00 | 2022-02-24 17:00 | 165 |  |
| 180 | **Frontend Dev** | 4.25d | 2022-02-18 15:00 | 2022-02-24 17:00 |  |  |
| 181 | Board list page | 0.25d | 2022-02-18 15:00 | 2022-02-18 17:00 | 173 | Tae |
| 182 | filter board by date or name | 0.25d | 2022-02-21 08:00 | 2022-02-21 10:00 | 181 | Tae |
| 183 | Board Create Form | 0.25d | 2022-02-21 10:00 | 2022-02-21 12:00 | 182 | Ice |
| 184 | validate board post form | 0.25d | 2022-02-21 13:00 | 2022-02-21 15:00 | 183 | Ice |
| 185 | Board Edit Form | 0.25d | 2022-02-21 15:00 | 2022-02-21 17:00 | 184 | Ice |
| 186 | validate edit board form | 0.25d | 2022-02-22 08:00 | 2022-02-22 10:00 | 185 | Ice |
| 187 | Delete board confirmation form | 0.25d | 2022-02-22 10:00 | 2022-02-22 12:00 | 186 | Ice |
| 188 | validate delete board form | 0.25d | 2022-02-22 13:00 | 2022-02-22 15:00 | 187 | Ice |
| 189 | Board Page | 0.25d | 2022-02-22 15:00 | 2022-02-22 17:00 | 188 | Ice |
| 190 | Binding Api | 2d | 2022-02-23 08:00 | 2022-02-24 17:00 | 189 | Ice |
| 191 | **Backend API** | 3d | 2022-02-18 15:00 | 2022-02-23 15:00 |  |  |
| 192 | Get information board | 0.5d | 2022-02-18 15:00 | 2022-02-21 10:00 | 178 | Mark |
| 193 | Create information board | 1d | 2022-02-21 10:00 | 2022-02-22 10:00 | 192 | Mark |
| 194 | Edit information board | 0.5d | 2022-02-22 10:00 | 2022-02-22 15:00 | 193 | Mark |
| 195 | Delete information board | 1d | 2022-02-22 15:00 | 2022-02-23 15:00 | 194 | Mark |
| 196 | Finish Implement Phase | 0d | 2022-02-23 15:00 | 2022-02-23 15:00 | 195 |  |
| 200 | Finish Deploy Phase | 0d | 2022-02-18 17:00 | 2022-02-18 17:00 | 198, 199 |  |
| 203 | Integration test | 6.62d | 2021-12-06 08:00 | 2022-01-10 17:00 | 202 | Advisor; Ice; Mark; Tae |
| 205 | User Acceptance Test | 4d | 2022-01-25 08:00 | 2022-01-31 14:00 | 204 | Advisor; Ice; Mark; Tae |
| 206 | Finish Test Phase | 0d | 2022-01-31 14:00 | 2022-01-31 14:00 | 205 |  |
| 209 | Finish Project | 0d | 2022-03-31 09:00 | 2022-03-31 09:00 | 208 |  |

Removed: 107 Frontend Dev

Changed:

| ID | Task | Start | Finish | Duration | Complete | Total float | Predecessors | Other |
| --- | --- | --- | --- | --- | --- | --- | --- | --- |
| 1 | **Requirement** | 2021-08-16 → 2021-08-16 09:00 A | 2021-08-19 → 2021-08-19 09:00 A |  | 0% → 100% |  |  | baseline start none → 2021-08-16 09:00; baseline finish none → 2021-08-19 09:00 |
| 2 | สรุป Requirement ที่ต้องทำจาก CEPP 2563 | 2021-08-16 → 2021-08-16 09:00 A | 2021-08-19 → 2021-08-19 09:00 A |  | 0% → 100% | 85.88d → none |  | baseline start none → 2021-08-16 09:00; baseline finish none → 2021-08-19 09:00 |
| 4 | **การออกแบบ** | 2021-08-19 → 2021-08-19 09:00 A | 2021-10-15 → 2021-10-15 18:00 |  | 0% → 100% |  |  | baseline start 2021-08-15 → 2021-08-19 09:00; baseline finish 2009-10-12 → 2021-10-15 18:00 |
| 5 | **Diagram** | 2021-08-19 → 2021-08-19 09:00 A | 2021-09-13 → 2021-09-14 12:00 A (+1d) | 17d → 18.38d | 0% → 100% | 85.88d → none |  | baseline start none → 2021-08-19 09:00; baseline finish none → 2021-09-14 12:00 |
| 6 | Use Case | 2021-08-19 → 2021-08-19 09:00 A | 2021-08-20 → 2021-08-20 09:00 A |  | 0% → 100% | 85.88d → none |  | baseline start none → 2021-08-19 09:00; baseline finish none → 2021-08-20 09:00 |
| 7 | Data Model | 2021-08-20 → 2021-08-20 09:00 A | 2021-08-31 → 2021-08-31 09:00 A |  | 0% → 100% | 85.88d → none |  | baseline start none → 2021-08-20 09:00; baseline finish none → 2021-08-31 09:00 |
| 8 | Sequence | 2021-08-31 → 2021-08-31 09:00 A | 2021-09-03 → 2021-09-03 09:00 A |  | 0% → 100% | 85.88d → none |  | baseline start none → 2021-08-31 09:00; baseline finish none → 2021-09-03 09:00 |
| 9 | Deployment | 2021-09-03 → 2021-09-03 09:00 A | 2021-09-06 → 2021-09-06 09:00 A |  | 0% → 100% | 85.88d → none |  | baseline start none → 2021-09-03 09:00; baseline finish none → 2021-09-06 09:00 |
| 10 | Microservice Deployment | 2021-09-06 → 2021-09-06 09:00 A | 2021-09-13 → 2021-09-14 12:00 A (+1d) | 5d → 6.38d | 0% → 100% | 85.88d → none |  | baseline start none → 2021-09-06 09:00; baseline finish none → 2021-09-14 12:00 |
| 12 | **API Modules Design** | 2021-09-13 → 2021-09-14 13:00 A (+1d) | 2021-10-15 → 2021-10-15 12:00 A | 24d → 23d | 0% → 100% | 85.88d → none |  | baseline start none → 2021-09-14 13:00; baseline finish none → 2021-10-15 12:00 |
| 13 | **ผู้เล่น** | 2021-09-13 → 2021-09-14 13:00 A (+1d) | 2021-09-30 → 2021-10-01 12:00 A (+1d) |  | 0% → 100% | 85.88d → none |  | baseline start none → 2021-09-14 13:00; baseline finish none → 2021-10-01 12:00 |
| 14 | การสมัครสมาชิก | 2021-09-13 → 2021-09-14 13:00 A (+1d) | 2021-09-14 → 2021-09-15 12:00 A (+1d) |  | 0% → 100% | 85.88d → none |  | baseline start none → 2021-09-14 13:00; baseline finish none → 2021-09-15 12:00 |
| 15 | การเพิ่มระดับสมาชิก | 2021-09-14 → 2021-09-15 13:00 A (+1d) | 2021-09-15 → 2021-09-16 12:00 A (+1d) |  | 0% → 100% | 85.88d → none |  | baseline start none → 2021-09-15 13:00; baseline finish none → 2021-09-16 12:00 |
| 16 | การเข้าสู่ระบบ | 2021-09-15 → 2021-09-16 13:00 A (+1d) | 2021-09-16 → 2021-09-17 12:00 A (+1d) |  | 0% → 100% | 85.88d → none |  | baseline start none → 2021-09-16 13:00; baseline finish none → 2021-09-17 12:00 |
| 17 | การแก้ไขรายละเอียดสมาชิก | 2021-09-16 → 2021-09-17 13:00 A (+1d) | 2021-09-17 → 2021-09-20 12:00 A (+3d) |  | 0% → 100% | 85.88d → none |  | baseline start none → 2021-09-17 13:00; baseline finish none → 2021-09-20 12:00 |
| 18 | การตั้งค่ารูปแบบหน้าจอ | 2021-09-17 → 2021-09-20 13:00 A (+3d) | 2021-09-20 → 2021-09-21 12:00 A (+1d) |  | 0% → 100% | 85.88d → none |  | baseline start none → 2021-09-20 13:00; baseline finish none → 2021-09-21 12:00 |
| 19 | การรับข้อมูลจากบอร์ดประกาศ | 2021-09-20 → 2021-09-21 13:00 A (+1d) | 2021-09-22 → 2021-09-23 12:00 A (+1d) |  | 0% → 100% | 85.88d → none |  | baseline start none → 2021-09-21 13:00; baseline finish none → 2021-09-23 12:00 |
| 20 | การเติมเงินและการจ่ายเงิน | 2021-09-22 → 2021-09-23 13:00 A (+1d) | 2021-09-24 → 2021-09-27 12:00 A (+3d) |  | 0% → 100% | 85.88d → none |  | baseline start none → 2021-09-23 13:00; baseline finish none → 2021-09-27 12:00 |
| 21 | การเข้าร่วมการแข่งขัน | 2021-09-24 → 2021-09-27 13:00 A (+3d) | 2021-09-27 → 2021-09-28 12:00 A (+1d) |  | 0% → 100% | 85.88d → none |  | baseline start none → 2021-09-27 13:00; baseline finish none → 2021-09-28 12:00 |
| 22 | การเรียกผู้จัดการการแข่งขัน | 2021-09-27 → 2021-09-28 13:00 A (+1d) | 2021-09-28 → 2021-09-29 12:00 A (+1d) |  | 0% → 100% | 85.88d → none |  | baseline start none → 2021-09-28 13:00; baseline finish none → 2021-09-29 12:00 |
| 23 | การดูผลการแข่งขันในปัจจุบัน | 2021-09-28 → 2021-09-29 13:00 A (+1d) | 2021-09-29 → 2021-09-30 12:00 A (+1d) |  | 0% → 100% | 85.88d → none |  | baseline start none → 2021-09-29 13:00; baseline finish none → 2021-09-30 12:00 |
| 24 | การดูผลการแข่งขันย้อนหลัง | 2021-09-29 → 2021-09-30 13:00 A (+1d) | 2021-09-30 → 2021-10-01 12:00 A (+1d) |  | 0% → 100% | 85.88d → none |  | baseline start none → 2021-09-30 13:00; baseline finish none → 2021-10-01 12:00 |
| 25 | **ผู้จัดการการแข่งขัน** | 2021-09-30 → 2021-10-01 13:00 A (+1d) | 2021-10-08 → 2021-10-11 12:00 A (+3d) |  | 0% → 100% | 85.88d → none |  | baseline start none → 2021-10-01 13:00; baseline finish none → 2021-10-11 12:00 |
| 26 | การเข้าสู่ระบบ | 2021-09-30 → 2021-10-01 13:00 A (+1d) | 2021-10-01 → 2021-10-04 12:00 A (+3d) |  | 0% → 100% | 85.88d → none |  | baseline start none → 2021-10-01 13:00; baseline finish none → 2021-10-04 12:00 |
| 27 | การดูข้อมูลการแข่งขันในปัจจุบัน | 2021-10-01 → 2021-10-04 13:00 A (+3d) | 2021-10-04 → 2021-10-05 12:00 A (+1d) |  | 0% → 100% | 85.88d → none |  | baseline start none → 2021-10-04 13:00; baseline finish none → 2021-10-05 12:00 |
| 28 | การสร้างรายการแข่งขัน | 2021-10-04 → 2021-10-05 13:00 A (+1d) | 2021-10-05 → 2021-10-06 12:00 A (+1d) |  | 0% → 100% | 85.88d → none |  | baseline start none → 2021-10-05 13:00; baseline finish none → 2021-10-06 12:00 |
| 29 | การแก้ไขรายละเอียดรายการแข่งขัน | 2021-10-05 → 2021-10-06 13:00 A (+1d) | 2021-10-06 → 2021-10-07 12:00 A (+1d) |  | 0% → 100% | 85.88d → none |  | baseline start none → 2021-10-06 13:00; baseline finish none → 2021-10-07 12:00 |
| 30 | การยกเลิกรายการแข่งขัน | 2021-10-06 → 2021-10-07 13:00 A (+1d) | 2021-10-07 → 2021-10-08 12:00 A (+1d) |  | 0% → 100% | 85.88d → none |  | baseline start none → 2021-10-07 13:00; baseline finish none → 2021-10-08 12:00 |
| 31 | การพิมพ์ผลลัพธ์การแข่ง | 2021-10-07 → 2021-10-08 13:00 A (+1d) | 2021-10-08 → 2021-10-11 12:00 A (+3d) |  | 0% → 100% | 85.88d → none |  | baseline start none → 2021-10-08 13:00; baseline finish none → 2021-10-11 12:00 |
| 32 | **ผู้ดูแลระบบ** | 2021-10-08 → 2021-10-11 13:00 A (+3d) | 2021-10-15 → 2021-10-15 12:00 A | 5d → 4d | 0% → 100% | 85.88d → none |  | baseline start none → 2021-10-11 13:00; baseline finish none → 2021-10-15 12:00 |
| 33 | การเข้าสู่ระบบ | 2021-10-08 → 2021-10-11 13:00 A (+3d) | 2021-10-11 → 2021-10-12 12:00 A (+1d) |  | 0% → 100% | 85.88d → none |  | baseline start none → 2021-10-11 13:00; baseline finish none → 2021-10-12 12:00 |
| 34 | การลงบอร์ดประกาศ | 2021-10-11 → 2021-10-12 13:00 A (+1d) | 2021-10-12 → 2021-10-13 12:00 A (+1d) |  | 0% → 100% | 85.88d → none |  | baseline start none → 2021-10-12 13:00; baseline finish none → 2021-10-13 12:00 |
| 35 | การจัดการสมาชิก | 2021-10-12 → 2021-10-13 13:00 A (+1d) | 2021-10-13 → 2021-10-14 12:00 A (+1d) |  | 0% → 100% | 85.88d → none |  | baseline start none → 2021-10-13 13:00; baseline finish none → 2021-10-14 12:00 |
| 36 | การจัดการเรื่องเงิน | 2021-10-13 → 2021-10-14 13:00 A (+1d) | 2021-10-14 → 2021-10-14 17:00 A | 1d → 0.5d | 0% → 100% | 85.88d → none |  | baseline start none → 2021-10-14 13:00; baseline finish none → 2021-10-14 17:00 |
| 37 | การสำรองข้อมูล | 2021-10-14 → 2021-10-15 08:00 A (+1d) | 2021-10-15 → 2021-10-15 12:00 A | 1d → 0.5d | 0% → 100% | 85.88d → none |  | baseline start none → 2021-10-15 08:00; baseline finish none → 2021-10-15 12:00 |
| 38 | **ออกแบบหน้า UI** | 2021-09-13 → 2021-09-14 13:00 A (+1d) | 2021-10-13 → 2021-10-12 12:00 A (-1d) | 22d → 20d | 0% → 100% | 87.88d → none |  | baseline start none → 2021-09-14 13:00; baseline finish none → 2021-10-12 12:00 |
| 39 | **ผู้เล่น** | 2021-09-13 → 2021-09-14 13:00 A (+1d) | 2021-10-13 → 2021-09-28 12:00 A (-15d) | 22d → 10d | 0% → 100% | 87.88d → none |  | baseline start none → 2021-09-14 13:00; baseline finish none → 2021-09-28 12:00 |
| 40 | หน้าเข้าสู่ระบบ | 2021-09-13 → 2021-09-14 13:00 A (+1d) | 2021-09-15 → 2021-09-14 17:00 A (-1d) | 2d → 0.5d | 0% → 100% | 87.88d → none |  | resources none → Tae; Ice; baseline start none → 2021-09-14 13:00; baseline finish none → 2021-09-14 17:00 |
| 41 | หน้าสมัครสมาชิก | 2021-09-15 → 2021-09-15 08:00 A | 2021-09-17 → 2021-09-15 12:00 A (-2d) | 2d → 0.5d | 0% → 100% | 87.88d → none |  | resources none → Tae; Ice; baseline start 2021-08-15 → 2021-09-15 08:00; baseline finish 2009-10-12 → 2021-09-15 12:00 |
| 42 | หน้ารายละเอียดสมาชิก | 2021-09-17 → 2021-09-15 13:00 A (-2d) | 2021-09-21 → 2021-09-16 12:00 A (-5d) | 2d → 1d | 0% → 100% | 87.88d → none |  | resources none → Tae; Ice; baseline start none → 2021-09-15 13:00; baseline finish none → 2021-09-16 12:00 |
| 43 | หน้าการตั้งค่ารูปแบบหน้าจอ | 2021-09-21 → 2021-09-16 13:00 A (-5d) | 2021-09-23 → 2021-09-17 12:00 A (-6d) | 2d → 1d | 0% → 100% | 87.88d → none |  | resources none → Tae; Ice; baseline start none → 2021-09-16 13:00; baseline finish none → 2021-09-17 12:00 |
| 44 | หน้าการเติมเงิน | 2021-09-23 → 2021-09-17 13:00 A (-6d) | 2021-09-27 → 2021-09-20 12:00 A (-7d) | 2d → 1d | 0% → 100% | 87.88d → none |  | resources none → Tae; Ice; baseline start none → 2021-09-17 13:00; baseline finish none → 2021-09-20 12:00 |
| 45 | หน้า Home | 2021-09-27 → 2021-09-20 13:00 A (-7d) | 2021-09-29 → 2021-09-21 12:00 A (-8d) | 2d → 1d | 0% → 100% | 87.88d → none |  | resources none → Tae; Ice; baseline start none → 2021-09-20 13:00; baseline finish none → 2021-09-21 12:00 |
| 46 | หน้าการแข่งขัน | 2021-09-29 → 2021-09-21 13:00 A (-8d) | 2021-10-01 → 2021-09-22 12:00 A (-9d) | 2d → 1d | 0% → 100% | 87.88d → none |  | resources none → Tae; Ice; baseline start none → 2021-09-21 13:00; baseline finish none → 2021-09-22 12:00 |
| 47 | หน้าเรียกกรรมการ | 2021-10-01 → 2021-09-22 13:00 A (-9d) | 2021-10-05 → 2021-09-23 12:00 A (-12d) | 2d → 1d | 0% → 100% | 87.88d → none |  | resources none → Tae; Ice; baseline start none → 2021-09-22 13:00; baseline finish none → 2021-09-23 12:00 |
| 48 | หน้าการแสดงคะแนน | 2021-10-05 → 2021-09-23 13:00 A (-12d) | 2021-10-07 → 2021-09-24 12:00 A (-13d) | 2d → 1d | 0% → 100% | 87.88d → none |  | resources none → Tae; Ice; baseline start none → 2021-09-23 13:00; baseline finish none → 2021-09-24 12:00 |
| 49 | หน้าผลการแข่งขันปัจจุบัน | 2021-10-07 → 2021-09-24 13:00 A (-13d) | 2021-10-11 → 2021-09-27 12:00 A (-14d) | 2d → 1d | 0% → 100% | 87.88d → none |  | resources none → Tae; Ice; baseline start none → 2021-09-24 13:00; baseline finish none → 2021-09-27 12:00 |
| 50 | หน้าผลการแข่งขันย้อนหลัง | 2021-10-11 → 2021-09-27 13:00 A (-14d) | 2021-10-13 → 2021-09-28 12:00 A (-15d) | 2d → 1d | 0% → 100% | 87.88d → none |  | resources none → Tae; Ice; baseline start none → 2021-09-27 13:00; baseline finish none → 2021-09-28 12:00 |
| 51 | **ผู้จัดการการแข่งขัน** | 2021-09-13 → 2021-09-28 13:00 A (+15d) | 2021-09-29 → 2021-10-04 17:00 A (+5d) | 12d → 4.5d | 0% → 100% | 97.88d → none |  | baseline start none → 2021-09-28 13:00; baseline finish none → 2021-10-04 17:00 |
| 52 | หน้าเข้าสู่ระบบ | 2021-09-13 → 2021-09-28 13:00 A (+15d) | 2021-09-15 → 2021-09-28 17:00 A (+13d) | 2d → 0.5d | 0% → 100% | 97.88d → none | 10 → 50 | resources none → Tae; Ice; baseline start none → 2021-09-28 13:00; baseline finish none → 2021-09-28 17:00 |
| 53 | หน้าดูข้อมูลการแข่งขันในปัจจุบัน | 2021-09-15 → 2021-09-29 08:00 A (+14d) | 2021-09-17 → 2021-09-29 12:00 A (+12d) | 2d → 0.5d | 0% → 100% | 97.88d → none |  | resources none → Tae; Ice; baseline start none → 2021-09-29 08:00; baseline finish none → 2021-09-29 12:00 |
| 54 | หน้าสร้างรายการแข่งขัน | 2021-09-17 → 2021-09-29 13:00 A (+12d) | 2021-09-21 → 2021-09-30 12:00 A (+9d) | 2d → 1d | 0% → 100% | 97.88d → none |  | resources none → Tae; Ice; baseline start none → 2021-09-29 13:00; baseline finish none → 2021-09-30 12:00 |
| 55 | หน้าแก้ไขรายละเอียดรายการแข่งขัน | 2021-09-21 → 2021-09-30 13:00 A (+9d) | 2021-09-23 → 2021-09-30 17:00 A (+7d) | 2d → 0.5d | 0% → 100% | 97.88d → none |  | resources none → Tae; Ice; baseline start none → 2021-09-30 13:00; baseline finish none → 2021-09-30 17:00 |
| 56 | หน้ายกเลิกรายการแข่งขัน | 2021-09-23 → 2021-10-01 08:00 A (+8d) | 2021-09-27 → 2021-10-01 17:00 A (+4d) | 2d → 1d | 0% → 100% | 97.88d → none |  | resources none → Tae; Ice; baseline start none → 2021-10-01 08:00; baseline finish none → 2021-10-01 17:00 |
| 57 | หน้าพิมพ์ผลลัพธ์การแข่ง | 2021-09-27 → 2021-10-04 08:00 A (+7d) | 2021-09-29 → 2021-10-04 17:00 A (+5d) | 2d → 1d | 0% → 100% | 97.88d → none |  | resources none → Tae; Ice; baseline start none → 2021-10-04 08:00; baseline finish none → 2021-10-04 17:00 |
| 58 | **ผู้ดูแลระบบ** | 2021-09-13 → 2021-10-05 08:00 A (+22d) | 2021-09-23 → 2021-10-12 12:00 A (+19d) | 8d → 5.5d | 0% → 100% | 101.88d → none |  | baseline start none → 2021-10-05 08:00; baseline finish none → 2021-10-12 12:00 |
| 59 | หน้าเข้าสู่ระบบ | 2021-09-13 → 2021-10-05 08:00 A (+22d) | 2021-09-14 → 2021-10-05 12:00 A (+21d) | 1d → 0.5d | 0% → 100% | 101.88d → none | 10 → 57 | resources none → Tae; Ice; baseline start none → 2021-10-05 08:00; baseline finish none → 2021-10-05 12:00 |
| 60 | หน้าลงบอร์ดประกาศ | 2021-09-14 → 2021-10-05 13:00 A (+21d) | 2021-09-15 → 2021-10-06 12:00 A (+21d) |  | 0% → 100% | 101.88d → none |  | resources none → Tae; Ice; baseline start none → 2021-10-05 13:00; baseline finish none → 2021-10-06 12:00 |
| 61 | หน้าจัดการสมาชิก | 2021-09-15 → 2021-10-06 13:00 A (+21d) | 2021-09-17 → 2021-10-07 12:00 A (+20d) | 2d → 1d | 0% → 100% | 101.88d → none |  | resources none → Tae; Ice; baseline start none → 2021-10-06 13:00; baseline finish none → 2021-10-07 12:00 |
| 62 | หน้าจัดการเรื่องเงิน | 2021-09-17 → 2021-10-07 13:00 A (+20d) | 2021-09-21 → 2021-10-08 12:00 A (+17d) | 2d → 1d | 0% → 100% | 101.88d → none |  | resources none → Tae; Ice; baseline start none → 2021-10-07 13:00; baseline finish none → 2021-10-08 12:00 |
| 63 | หน้าสำรองข้อมูล | 2021-09-21 → 2021-10-08 13:00 A (+17d) | 2021-09-23 → 2021-10-12 12:00 A (+19d) |  | 0% → 100% | 101.88d → none |  | resources none → Tae; Ice; baseline start none → 2021-10-08 13:00; baseline finish none → 2021-10-12 12:00 |
| 65 | **การนำมาใช้** | 2021-10-18 → 2021-10-18 08:00 A | 2022-01-28 → 2022-02-24 18:00 (+27d) | 75.12d? → 94.12d | 0% → 21% |  |  | baseline start 2021-08-15 → 2021-10-18 08:00; baseline finish 2009-10-12 → 2022-01-31 17:00 |
| 66 | **ทำระบบล็อคอิน** | 2021-10-18 → 2021-10-18 08:00 A | 2021-10-18 → 2021-10-19 17:00 (+1d) | 1d? → 2d | 0% → 91% | 85d → 14d |  | baseline start 2009-10-12 → 2021-10-18 08:00; baseline finish 2009-10-12 → 2021-10-19 17:00 |
| 67 | **Frontend Dev** | 2021-10-18 → 2021-10-18 08:00 A | 2021-10-18 → 2021-10-18 15:00 | 1d? → 0.75d | 0% → 67% | 85d → 15.25d |  | baseline start none → 2021-10-18 08:00; baseline finish none → 2021-10-18 15:00 |
| 72 | **Backend API** | 2021-10-18 → 2021-10-18 08:00 A | 2021-10-18 → 2021-10-19 17:00 A (+1d) | 1d? → 2d | 0% → 100% | 85d → none |  | baseline start none → 2021-10-18 08:00; baseline finish none → 2021-10-19 17:00 |
| 73 | Login & Authentication & Authorization | 2021-10-18 → 2021-10-18 08:00 A | 2021-10-18 → 2021-10-19 17:00 A (+1d) | 1d? → 2d | 0% → 100% | 85d → none | none → 63 | was named Authentication & Authorization; resources none → Mark; baseline start none → 2021-10-18 08:00; baseline finish none → 2021-10-19 17:00 |
| 74 | **ทำระบบสมัครสมาชิก** | 2021-10-19 → 2021-10-20 08:00 A (+1d) | 2021-10-19 → 2021-10-21 17:00 A (+2d) | 1d? → 2d | 0% → 100% | 85d → none |  | baseline start 2009-10-12 → 2021-10-20 08:00; baseline finish 2009-10-12 → 2021-10-21 17:00 |
| 75 | **Frontend Dev** | 2021-10-19 → 2021-10-20 08:00 A (+1d) | 2021-10-19 → 2021-10-20 17:00 A (+1d) | 1d? → 1d | 0% → 100% | 85d → none |  | baseline start none → 2021-10-20 08:00; baseline finish none → 2021-10-20 17:00 |
| 80 | **Backend API** | 2021-10-19 → 2021-10-20 08:00 A (+1d) | 2021-10-19 → 2021-10-21 17:00 A (+2d) | 1d? → 2d | 0% → 100% | 85d → none |  | baseline start none → 2021-10-20 08:00; baseline finish none → 2021-10-21 17:00 |
| 81 | Register user | 2021-10-19 → 2021-10-20 08:00 A (+1d) | 2021-10-19 → 2021-10-20 17:00 A (+1d) | 1d? → 1d | 0% → 100% | 85d → none | none → 73 | resources none → Mark; baseline start none → 2021-10-20 08:00; baseline finish none → 2021-10-20 17:00 |

| ID | Task | Start | Finish | Duration | Complete | Total float | Predecessors | Other |
| --- | --- | --- | --- | --- | --- | --- | --- | --- |
| 82 | Update user | 2021-10-19 → 2021-10-21 08:00 A (+2d) | 2021-10-19 → 2021-10-21 17:00 A (+2d) | 1d? → 1d | 0% → 100% | 85d → none | none → 81 | resources none → Mark; baseline start none → 2021-10-21 08:00; baseline finish none → 2021-10-21 17:00 |
| 83 | **ทำระบบของรูปแบบการแข่งขัน** | 2021-10-20 → 2021-10-22 08:00 A (+2d) | 2021-10-20 → 2021-11-10 12:00 (+21d) | 1d? → 13.5d | 0% → 84% | 85d → 0d |  | baseline start 2009-10-12 → 2021-10-22 08:00; baseline finish 2009-10-12 → 2021-11-10 12:00 |
| 84 | **Frontend Dev** | 2021-10-20 → 2021-10-22 08:00 A (+2d) | 2021-10-20 → 2021-11-10 12:00 (+21d) | 1d? → 13.5d | 0% → 75% | 85d → 0d |  | baseline start none → 2021-10-22 08:00; baseline finish none → 2021-11-10 12:00 |
| 98 | **Backend API** | 2021-10-20 → 2021-10-22 08:00 A (+2d) | 2021-10-20 → 2021-11-04 17:00 (+15d) | 1d? → 10d | 0% → 95% | 85d → 0d |  | baseline start none → 2021-10-22 08:00; baseline finish none → 2021-11-04 17:00 |
| 99 | Create tournament | 2021-10-20 → 2021-10-22 08:00 A (+2d) | 2021-10-20 → 2021-10-22 17:00 A (+2d) | 1d? → 1d | 0% → 100% | 85d → none | none → 82 | resources none → Mark; baseline start none → 2021-10-22 08:00; baseline finish none → 2021-10-22 17:00 |
| 100 | Update tournament | 2021-10-20 → 2021-10-25 08:00 A (+5d) | 2021-10-20 → 2021-10-26 17:00 A (+6d) | 1d? → 2d | 0% → 100% | 85d → none | none → 99 | resources none → Mark; baseline start none → 2021-10-25 08:00; baseline finish none → 2021-10-26 17:00 |
| 101 | Delete tournament | 2021-10-20 → 2021-10-27 08:00 A (+7d) | 2021-10-20 → 2021-10-27 17:00 A (+7d) | 1d? → 1d | 0% → 100% | 85d → none | none → 100 | resources none → Mark; baseline start none → 2021-10-27 08:00; baseline finish none → 2021-10-27 17:00 |
| 102 | Join tournament | 2021-10-20 → 2021-10-28 08:00 A (+8d) | 2021-10-20 → 2021-10-28 12:00 A (+8d) | 1d? → 0.5d | 0% → 100% | 85d → none | none → 101 | resources none → Mark; baseline start none → 2021-10-28 08:00; baseline finish none → 2021-10-28 12:00 |
| 103 | Exit tournament | 2021-10-20 → 2021-10-28 13:00 A (+8d) | 2021-10-20 → 2021-10-29 12:00 A (+9d) | 1d? → 1d | 0% → 100% | 85d → none | none → 102 | resources none → Mark; baseline start none → 2021-10-28 13:00; baseline finish none → 2021-10-29 12:00 |
| 104 | Create team | 2021-10-20 → 2021-10-29 13:00 A (+9d) | 2021-10-20 → 2021-11-01 12:00 A (+12d) | 1d? → 1d | 0% → 100% | 85d → none | none → 103 | resources none → Mark; baseline start none → 2021-10-29 13:00; baseline finish none → 2021-11-01 12:00 |
| 105 | Join team | 2021-10-20 → 2021-11-01 13:00 A (+12d) | 2021-10-20 → 2021-11-02 12:00 A (+13d) | 1d? → 1d | 0% → 100% | 85d → none | none → 104 | resources none → Mark; baseline start none → 2021-11-01 13:00; baseline finish none → 2021-11-02 12:00 |
| 106 | Exit team | 2021-10-20 → 2021-11-02 13:00 A (+13d) | 2021-10-20 → 2021-11-02 17:00 A (+13d) | 1d? → 0.5d | 0% → 100% | 85d → none | none → 105 | resources none → Mark; baseline start none → 2021-11-02 13:00; baseline finish none → 2021-11-02 17:00 |
| 107 | Manage competitive | 2021-10-20 → 2021-11-03 08:00 A (+14d) | 2021-10-20 → 2021-11-04 17:00 (+15d) | 1d? → 2d | 0% → 75% | 85d → -74d | none → 106 | resources none → Mark; baseline start none → 2021-11-03 08:00; baseline finish none → 2021-11-04 17:00 |
| 110 | **ทำระบบการแข่งขัน** | 2021-10-21 → 2021-11-10 13:00 (+20d) | 2021-10-21 → 2022-01-27 12:00 (+98d) | 1d? → 56d |  | 85d → -74d |  | baseline start 2009-10-12 → 2021-11-10 13:00; baseline finish 2009-10-12 → 2022-01-06 17:00 |
| 111 | **Frontend Dev** | 2021-10-21 → 2021-11-10 13:00 (+20d) | 2021-10-21 → 2022-01-24 12:00 (+95d) | 1d? → 53d |  | 85d → -72.99d |  | baseline start none → 2021-11-10 13:00; baseline finish none → 2022-01-06 17:00 |
| 126 | **Backend API** | 2021-10-21 → 2021-12-06 08:00 (+46d) | 2021-10-21 → 2022-01-27 12:00 (+98d) | 1d? → 38.5d |  | 85d → -79.12d |  | baseline start none → 2021-11-10 13:00; baseline finish none → 2021-12-28 12:00 |
| 127 | Bidding | 2021-10-21 → 2021-12-06 08:00 (+46d) | 2021-10-21 → 2021-12-10 17:00 (+50d) | 1d? → 5d |  | 85d → -77d | none → 107 | resources none → Mark; baseline start none → 2021-11-10 13:00; baseline finish none → 2021-11-17 12:00 |
| 128 | Deal card | 2021-10-21 → 2021-12-17 13:00 (+57d) | 2021-10-21 → 2021-12-24 12:00 (+64d) | 1d? → 5d |  | 85d → -79.12d | none → 127 | resources none → Mark; baseline start none → 2021-11-17 13:00; baseline finish none → 2021-11-24 12:00 |
| 129 | Play card | 2021-10-21 → 2021-12-24 13:00 (+64d) | 2021-10-21 → 2022-01-07 12:00 (+78d) | 1d? → 10d |  | 85d → -79.12d | none → 128 | resources none → Mark; baseline start none → 2021-11-24 13:00; baseline finish none → 2021-12-08 12:00 |
| 130 | Calculate score | 2021-10-21 → 2022-01-07 13:00 (+78d) | 2021-10-21 → 2022-01-14 12:00 (+85d) | 1d? → 5d |  | 85d → -79.12d | none → 129 | resources none → Mark; baseline start none → 2021-12-08 13:00; baseline finish none → 2021-12-15 12:00 |
| 131 | Ranking score | 2021-10-21 → 2022-01-14 13:00 (+85d) | 2021-10-21 → 2022-01-19 12:00 (+90d) | 1d? → 3d |  | 85d → -79.12d | none → 130 | resources none → Mark; baseline start none → 2021-12-15 13:00; baseline finish none → 2021-12-20 12:00 |
| 132 | Swap table | 2021-10-21 → 2022-01-19 13:00 (+90d) | 2021-10-21 → 2022-01-24 12:00 (+95d) | 1d? → 3d |  | 85d → -79.12d | none → 131 | resources none → Mark; baseline start none → 2021-12-20 13:00; baseline finish none → 2021-12-23 12:00 |
| 133 | Swap card | 2021-10-21 → 2022-01-24 13:00 (+95d) | 2021-10-21 → 2022-01-27 12:00 (+98d) | 1d? → 3d |  | 85d → -79.12d | none → 132 | resources none → Mark; baseline start none → 2021-12-23 13:00; baseline finish none → 2021-12-28 12:00 |
| 134 | **ทำระบบการบันทึกคะแนน** | 2021-10-22 → 2022-01-24 13:00 (+94d) | 2021-10-22 → 2022-02-02 12:00 (+103d) | 1d? → 7d |  | 85d → -77.5d | 110 → none | baseline start 2009-10-12 → 2021-12-28 13:00; baseline finish 2009-10-12 → 2022-01-07 12:00 |
| 135 | **Frontend Dev** | 2021-10-22 → 2022-01-24 13:00 (+94d) | 2021-10-22 → 2022-01-24 17:00 (+94d) | 1d? → 0.5d |  | 85d → -71d |  | baseline start none → 2022-01-07 08:00; baseline finish none → 2022-01-07 12:00 |
| 138 | **Backend API** | 2021-10-22 → 2022-01-27 15:00 (+97d) | 2021-10-22 → 2022-02-02 12:00 (+103d) | 1d? → 3.75d |  | 85d → -79.25d |  | baseline start none → 2021-12-28 13:00; baseline finish none → 2021-12-31 12:00 |
| 139 | Save score of tournament | 2021-10-22 → 2022-01-27 15:00 (+97d) | 2021-10-22 → 2022-01-28 10:00 (+98d) | 1d? → 0.5d |  | 85d → -79.25d | none → 133 | resources none → Mark; baseline start none → 2021-12-28 13:00; baseline finish none → 2021-12-29 12:00 |
| 140 | Save Ranking of tournament | 2021-10-22 → 2022-02-01 13:00 (+102d) | 2021-10-22 → 2022-02-01 17:00 (+102d) | 1d? → 0.5d |  | 85d → -78d | none → 139 | resources none → Mark; baseline start none → 2021-12-29 13:00; baseline finish none → 2021-12-30 12:00 |
| 141 | Save card in tournament | 2021-10-22 → 2022-02-02 08:00 (+103d) | 2021-10-22 → 2022-02-02 12:00 (+103d) | 1d? → 0.5d |  | 85d → -78d | none → 140 | resources none → Mark; baseline start none → 2021-12-30 13:00; baseline finish none → 2021-12-31 12:00 |
| 142 | **ทำระบบการค้นหาข้อมูลการแข่งขัน** | 2021-10-25 → 2022-01-25 08:00 (+92d) | 2021-10-25 → 2022-02-04 12:00 (+102d) | 1d? → 8.5d |  | 85d → -78d | 134 → none | baseline start 2009-10-12 → 2021-12-31 13:00; baseline finish 2009-10-12 → 2022-01-10 12:00 |
| 143 | **Frontend Dev** | 2021-10-25 → 2022-01-25 08:00 (+92d) | 2021-10-25 → 2022-01-26 12:00 (+93d) | 1d? → 1.5d |  | 85d → -71d |  | baseline start none → 2022-01-07 13:00; baseline finish none → 2022-01-10 12:00 |
| 148 | **Backend API** | 2021-10-25 → 2022-02-02 13:00 (+100d) | 2021-10-25 → 2022-02-04 12:00 (+102d) | 1d? → 2d |  | 85d → -78d |  | baseline start none → 2021-12-31 13:00; baseline finish none → 2022-01-04 12:00 |
| 151 | **ทำระบบการเล่นในชีวิตจริง** | 2021-10-26 → 2022-02-04 13:00 (+101d) | 2021-10-26 → 2022-02-08 12:00 (+105d) | 1d? → 2d |  | 85d → -78d |  | was named ทำระบบการชำระเงิน; baseline start 2009-10-12 → 2022-01-10 13:00; baseline finish 2009-10-12 → 2022-01-12 12:00 |
| 152 | **Frontend Dev** | 2021-10-26 → 2022-02-04 13:00 (+101d) | 2021-10-26 → 2022-02-07 17:00 (+104d) | 1d? → 1.5d |  | 85d → -77.5d |  | baseline start none → 2022-01-10 13:00; baseline finish none → 2022-01-11 17:00 |
| 158 | **Backend API** | 2021-10-26 → 2022-02-04 13:00 (+101d) | 2021-10-26 → 2022-02-08 12:00 (+105d) | 1d? → 2d |  | 85d → -78d |  | baseline start none → 2022-01-10 13:00; baseline finish none → 2022-01-12 12:00 |
| 161 | **ทำระบบการสำรองข้อมูล** | 2021-10-27 → 2022-02-08 13:00 (+104d) | 2021-10-27 → 2022-02-10 12:00 (+106d) | 1d? → 2d |  | 85d → -78d |  | baseline start 2009-10-12 → 2022-01-12 13:00; baseline finish 2009-10-12 → 2022-01-14 12:00 |
| 164 | Get data | 2021-10-27 → 2022-02-09 13:00 (+105d) | 2021-10-27 → 2022-02-10 12:00 (+106d) | 1d? → 1d |  | 85d → -78d | none → 163 | was named Backend API; resources none → Mark; baseline start none → 2022-01-13 13:00; baseline finish none → 2022-01-14 12:00 |
| 197 | **การ Deploy** | 2022-01-31 → 2022-02-01 09:00 (+1d) | 2022-02-04 → 2022-02-18 18:00 (+14d) | 5.12d → 14d |  |  |  | baseline start none → 2022-02-01 09:00; baseline finish none → 2022-02-09 18:00 |
| 198 | Deploy หน้าเว็บ | 2022-01-31 → 2022-02-02 08:00 (+2d) | 2022-02-01 → 2022-02-07 17:00 (+6d) | 2d → 4d |  | 18d → -61d |  | resources none → Tae; baseline start none → 2022-02-01 09:00; baseline finish none → 2022-02-07 09:00 |
| 199 | Deploy API | 2022-01-31 → 2022-02-15 08:00 (+15d) | 2022-02-01 → 2022-02-18 17:00 (+17d) | 2d → 4d |  | 18d → -70d |  | was named Deploy api; resources none → Mark; baseline start none → 2022-02-01 09:00; baseline finish none → 2022-02-07 09:00 |
| 201 | **การทดสอบ** | 2022-02-07 → 2021-11-15 09:00 (-84d) | 2022-03-18 → 2022-03-21 18:00 (+3d) | 30.12d → 91d | 0% → 2% |  |  | baseline start none → 2022-02-10 09:00; baseline finish none → 2022-03-21 18:00 |
| 202 | Unit test | 2022-02-07 → 2021-11-15 08:00 A (-84d) | 2022-02-25 → 2021-12-03 17:00 (-84d) |  | 0% → 5% | 15d → 35.5d |  | was named การทำ Unit test; constraint none → start no earlier than 2021-11-14 09:00; resources none → Advisor; Ice; Mark; Tae; baseline start none → 2022-02-14 09:00; baseline finish none → 2022-03-07 09:00 |
| 204 | Performance testing | 2022-02-07 → 2022-01-11 08:00 (-27d) | 2022-02-11 → 2022-01-24 17:00 (-18d) | 5d → 10d |  | 25d → 35.5d | none → 203 | was named การทดสอบ Performance; resources none → Advisor; Ice; Mark; Tae; baseline start none → 2022-03-10 09:00; baseline finish none → 2022-03-21 09:00 |
| 207 | **การประเมินผล** | 2022-03-21 → 2022-03-22 09:00 (+1d) | 2022-03-29 → 2022-03-31 09:00 (+2d) |  |  |  |  | baseline start none → 2022-03-22 09:00; baseline finish none → 2022-03-31 09:00 |
| 208 | การดูผลตอบรับจากผู้ใช้งานจริง | 2022-03-21 → 2022-03-22 09:00 (+1d) | 2022-03-29 → 2022-03-31 09:00 (+2d) |  |  |  | none → 204 | resources none → Advisor; Ice; Mark; Tae; baseline start none → 2022-03-22 09:00; baseline finish none → 2022-03-31 09:00 |
